# 墨西哥工厂IT系统实施 2023

How a schedule from a web Gantt chart changed from version to version. A marks actual dates.

## Version 1 (saved 2024-05-20)

| ID | WBS | Task | Duration | Start | Finish | Predecessors | Complete |
| --- | --- | --- | --- | --- | --- | --- | --- |
| 2 | 1 | **厂房购置** | 136d | 2023-06-20 | 2023-12-26 |  | 73% |
| 3 |  | 厂房意向书签署 | 106d | 2023-06-20 | 2023-11-14 |  | 100% |
| 4 |  | 卖方终止当前租赁 | 30d | 2023-11-15 | 2023-12-26 | 3 | 100% |
| 5 |  | 公司注册 | 106d | 2023-05-31 | 2023-10-25 |  | 100% |
| 6 |  | 互联网出口 | 159d | 2023-09-20 | 2024-04-29 |  | 100% |
| 7 |  | 专线互联互通 | 159d | 2023-09-20 | 2024-04-29 |  | 100% |
| 8 |  | ERP系统实施 | 177d | 2023-10-26 | 2024-06-28 | 5 | 100% |
| 9 |  | 弱电需求调研 | 21d | 2023-06-20 | 2023-07-18 |  | 100% |
| 10 |  | 弱电方案设计 | 28d | 2023-07-19 | 2023-08-25 | 9 | 100% |
| 11 | 8 | **弱电物料采购** | 199d | 2023-08-28 | 2024-05-30 |  | 98% |
| 12 |  | 弱电有源物料（机房设备，含服务器） | 169d | 2023-08-28 | 2024-04-18 | 10 | 100% |
| 13 |  | 弱电无源物料（综合布线） | 169d | 2023-08-28 | 2024-04-18 | 10 | 100% |
| 14 |  | 终端设备采购(PDA 电脑 打印机 扫码器) | 30d | 2024-04-19 | 2024-05-30 | 12 | 80% |
| 15 | 9 | **设备安装调测** | 58d | 2024-04-19 | 2024-07-09 |  | 55% |
| 16 |  | 数据中心/机房设备安装 | 28d | 2024-04-19 | 2024-05-28 | 12 | 100% |
| 17 |  | 弱电综合布线 | 58d | 2024-04-19 | 2024-07-09 | 12 | 50% |
| 18 |  | 接入层网络安装调测 | 28d | 2024-05-29 | 2024-07-05 | 16 | 20% |
| 19 | 10 | **本地IT招聘及培训** | 120d | 2023-09-25 | 2024-03-08 |  | 100% |
| 20 |  | 本地IT招聘 | 60d | 2023-09-25 | 2023-12-15 |  | 100% |
| 21 |  | 本地IT培训 | 60d | 2023-12-18 | 2024-03-08 | 20 | 100% |
| 22 | 11 | **CIP系统实施** | 72d | 2024-04-23 | 2024-07-31 |  | 13% |
| 23 |  | CIP系统安装 | 7d | 2024-04-23 | 2024-05-01 |  | 100% |
| 24 |  | CIP功能实施 | 65d | 2024-05-02 | 2024-07-31 | 23 | 10% |
| 25 |  | 数据采集实施 | 48d | 2024-04-23 | 2024-06-27 |  | 5% |
| 26 |  | WMS系统实施 | 39d | 2024-04-24 | 2024-06-17 |  | 20% |
| 27 |  | 试生产 | 1d | 2024-04-30 | 2024-04-30 |  | 100% |
| 28 | 14 | **其他系统实施** | 152d | 2023-10-26 | 2024-05-24 |  | 100% |
| 29 |  | PS系统实施 | 11d | 2023-10-26 | 2023-11-09 |  | 100% |
| 30 |  | PLM系统实施 | 20d | 2024-04-29 | 2024-05-24 |  | 100% |
| 31 |  | SRM系统实施 | 11d | 2023-10-26 | 2023-11-09 |  | 100% |
| 32 |  | 费控系统实施 | 11d | 2023-10-26 | 2023-11-09 |  | 100% |
| 33 |  | CRM系统实施 | 28d | 2023-11-13 | 2023-12-20 |  | 100% |

## Version 2 (saved 2024-05-24)

Last finish stays 2024-07-31.

Changed:

| ID | Task | Complete |
| --- | --- | --- |
| 15 | **设备安装调测** | 55% → 61% |
| 17 | 弱电综合布线 | 50% → 60% |
| 18 | 接入层网络安装调测 | 20% → 25% |

## Version 3 (saved 2024-05-31)

Last finish stays 2024-07-31. Complete tasks 20 → 21.

Added:

| ID | Task | Duration | Start | Finish | Predecessors |
| --- | --- | --- | --- | --- | --- |
| 14 | 终端设备采购(PDA 电脑 打印机 扫码枪) | 30d | 2024-04-19 | 2024-05-30 | 12 |

Removed: 14 终端设备采购(PDA 电脑 打印机 扫码器)

Changed:

| ID | Task | Complete |
| --- | --- | --- |
| 2 | **厂房购置** | 73% → 77% |
| 11 | **弱电物料采购** | 98% → 100% |
| 15 | **设备安装调测** | 61% → 78% |
| 17 | 弱电综合布线 | 60% → 80% |
| 18 | 接入层网络安装调测 | 25% → 50% |
| 22 | **CIP系统实施** | 13% → 26% |
| 24 | CIP功能实施 | 10% → 30% |
| 25 | 数据采集实施 | 5% → 10% |
| 26 | WMS系统实施 | 20% → 40% |

## Version 4 (saved 2024-06-07)

Last finish stays 2024-07-31.

Changed:

| ID | Task | Complete |
| --- | --- | --- |
| 15 | **设备安装调测** | 78% → 85% |
| 17 | 弱电综合布线 | 80% → 90% |
| 18 | 接入层网络安装调测 | 50% → 60% |

## Version 5 (saved 2024-06-11)

Last finish stays 2024-07-31.

Changed:

| ID | Task | Complete |
| --- | --- | --- |
| 2 | **厂房购置** | 77% → 80% |
| 15 | **设备安装调测** | 85% → 90% |
| 18 | 接入层网络安装调测 | 60% → 80% |
| 22 | **CIP系统实施** | 26% → 32% |
| 24 | CIP功能实施 | 30% → 40% |
| 26 | WMS系统实施 | 40% → 50% |

## Version 6 (saved 2024-06-14)

Last finish stays 2024-07-31.

Changed:

| ID | Task | Complete |
| --- | --- | --- |
| 2 | **厂房购置** | 80% → 85% |
| 22 | **CIP系统实施** | 32% → 46% |
| 24 | CIP功能实施 | 40% → 60% |
| 25 | 数据采集实施 | 10% → 20% |
| 26 | WMS系统实施 | 50% → 70% |

## Version 7 (saved 2024-06-18)

Last finish stays 2024-07-31. Complete tasks 21 → 22.

Changed:

| ID | Task | Complete |
| --- | --- | --- |
| 2 | **厂房购置** | 85% → 88% |
| 15 | **设备安装调测** | 90% → 98% |
| 17 | 弱电综合布线 | 90% → 100% |
| 18 | 接入层网络安装调测 | 80% → 90% |
| 22 | **CIP系统实施** | 46% → 56% |
| 24 | CIP功能实施 | 60% → 70% |
| 25 | 数据采集实施 | 20% → 30% |
| 26 | WMS系统实施 | 70% → 80% |

## Version 8 (saved 2024-06-28)

Last finish stays 2024-07-31. Complete tasks 22 → 23.

Changed:

| ID | Task | Complete |
| --- | --- | --- |
| 2 | **厂房购置** | 88% → 90% |
| 15 | **设备安装调测** | 98% → 100% |
| 18 | 接入层网络安装调测 | 90% → 100% |
| 22 | **CIP系统实施** | 56% → 61% |
| 24 | CIP功能实施 | 70% → 80% |
| 26 | WMS系统实施 | 80% → 90% |

## Version 9 (saved 2024-07-05)

Last finish stays 2024-07-31.

Changed:

| ID | Task | Complete |
| --- | --- | --- |
| 2 | **厂房购置** | 90% → 96% |
| 22 | **CIP系统实施** | 61% → 87% |
| 24 | CIP功能实施 | 80% → 90% |
| 25 | 数据采集实施 | 30% → 80% |
| 26 | WMS系统实施 | 90% → 95% |

## Version 10 (saved 2024-07-12)

Last finish 2024-07-31 → 2024-08-01 (+1d).

Changed:

| ID | Task | Start | Finish | Complete |
| --- | --- | --- | --- | --- |
| 2 | **厂房购置** | 2023-06-20 → 2023-06-21 (+1d) | 2023-12-26 → 2023-12-27 (+1d) | 96% → 97% |
| 3 | 厂房意向书签署 | 2023-06-20 → 2023-06-21 (+1d) | 2023-11-14 → 2023-11-15 (+1d) |  |
| 4 | 卖方终止当前租赁 | 2023-11-15 → 2023-11-16 (+1d) | 2023-12-26 → 2023-12-27 (+1d) |  |
| 5 | 公司注册 | 2023-05-31 → 2023-06-01 (+1d) | 2023-10-25 → 2023-10-26 (+1d) |  |
| 6 | 互联网出口 | 2023-09-20 → 2023-09-21 (+1d) | 2024-04-29 → 2024-04-30 (+1d) |  |
| 7 | 专线互联互通 | 2023-09-20 → 2023-09-21 (+1d) | 2024-04-29 → 2024-04-30 (+1d) |  |
| 8 | ERP系统实施 | 2023-10-26 → 2023-10-27 (+1d) | 2024-06-28 → 2024-07-01 (+3d) |  |
| 9 | 弱电需求调研 | 2023-06-20 → 2023-06-21 (+1d) | 2023-07-18 → 2023-07-19 (+1d) |  |
| 10 | 弱电方案设计 | 2023-07-19 → 2023-07-20 (+1d) | 2023-08-25 → 2023-08-28 (+3d) |  |
| 11 | **弱电物料采购** | 2023-08-28 → 2023-08-29 (+1d) | 2024-05-30 → 2024-05-31 (+1d) |  |
| 12 | 弱电有源物料（机房设备，含服务器） | 2023-08-28 → 2023-08-29 (+1d) | 2024-04-18 → 2024-04-19 (+1d) |  |
| 13 | 弱电无源物料（综合布线） | 2023-08-28 → 2023-08-29 (+1d) | 2024-04-18 → 2024-04-19 (+1d) |  |
| 14 | 终端设备采购(PDA 电脑 打印机 扫码枪) | 2024-04-19 → 2024-04-22 (+3d) | 2024-05-30 → 2024-05-31 (+1d) |  |
| 15 | **设备安装调测** | 2024-04-19 → 2024-04-22 (+3d) | 2024-07-09 → 2024-07-10 (+1d) |  |
| 16 | 数据中心/机房设备安装 | 2024-04-19 → 2024-04-22 (+3d) | 2024-05-28 → 2024-05-29 (+1d) |  |
| 17 | 弱电综合布线 | 2024-04-19 → 2024-04-22 (+3d) | 2024-07-09 → 2024-07-10 (+1d) |  |
| 18 | 接入层网络安装调测 | 2024-05-29 → 2024-05-30 (+1d) | 2024-07-05 → 2024-07-08 (+3d) |  |
| 19 | **本地IT招聘及培训** | 2023-09-25 → 2023-09-26 (+1d) | 2024-03-08 → 2024-03-11 (+3d) |  |
| 20 | 本地IT招聘 | 2023-09-25 → 2023-09-26 (+1d) | 2023-12-15 → 2023-12-18 (+3d) |  |
| 21 | 本地IT培训 | 2023-12-18 → 2023-12-19 (+1d) | 2024-03-08 → 2024-03-11 (+3d) |  |
| 22 | **CIP系统实施** | 2024-04-23 → 2024-04-24 (+1d) | 2024-07-31 → 2024-08-01 (+1d) | 87% → 88% |
| 23 | CIP系统安装 | 2024-04-23 → 2024-04-24 (+1d) | 2024-05-01 → 2024-05-02 (+1d) |  |
| 24 | CIP功能实施 | 2024-05-02 → 2024-05-03 (+1d) | 2024-07-31 → 2024-08-01 (+1d) | 90% → 92% |
| 25 | 数据采集实施 | 2024-04-23 → 2024-04-24 (+1d) | 2024-06-27 → 2024-06-28 (+1d) |  |
| 26 | WMS系统实施 | 2024-04-24 → 2024-04-25 (+1d) | 2024-06-17 → 2024-06-18 (+1d) | 95% → 98% |
| 27 | 试生产 | 2024-04-30 → 2024-05-01 (+1d) | 2024-04-30 → 2024-05-01 (+1d) |  |
| 28 | **其他系统实施** | 2023-10-26 → 2023-10-27 (+1d) | 2024-05-24 → 2024-05-27 (+3d) |  |
| 29 | PS系统实施 | 2023-10-26 → 2023-10-27 (+1d) | 2023-11-09 → 2023-11-10 (+1d) |  |
| 30 | PLM系统实施 | 2024-04-29 → 2024-04-30 (+1d) | 2024-05-24 → 2024-05-27 (+3d) |  |
| 31 | SRM系统实施 | 2023-10-26 → 2023-10-27 (+1d) | 2023-11-09 → 2023-11-10 (+1d) |  |
| 32 | 费控系统实施 | 2023-10-26 → 2023-10-27 (+1d) | 2023-11-09 → 2023-11-10 (+1d) |  |
| 33 | CRM系统实施 | 2023-11-13 → 2023-11-14 (+1d) | 2023-12-20 → 2023-12-21 (+1d) |  |
